# FOPLP 面板式封装

Schedule from a web Gantt chart, 2025-06-13 to 2026-01-25.
Every day is a working day

## Schedule

| ID | WBS | Task | Duration | Start | Finish | Predecessors | Complete | Status |
| --- | --- | --- | --- | --- | --- | --- | --- | --- |
| 2 | 1 | FOPLP 8X9 Design | 6d | 2025-06-13 | 2025-06-18 |  | 100% | done |
| 3 | 2 | 2-FM+2M RDL wafer | 9d | 2025-07-18 | 2025-07-26 |  | 100% | done |
| 4 | 3 | 1st Eng sample | 45d | 2025-08-04 | 2025-09-17 |  | 100% | done |
| 5 | 4 | **RE 摸底** | 70d | 2025-09-18 | 2025-11-26 |  | 47% |  |
| 6 | 4.1 | Pre-con/MSL | 33d | 2025-09-18 | 2025-10-20 | 4 | 100% |  |
| 7 | 4.2 | 1st TC200 | 9d | 2025-10-21 | 2025-10-29 | 6 |  | waiting |
| 8 | 4.3 | 1st TC500 | 12d | 2025-10-30 | 2025-11-10 | 7 |  | waiting |
| 9 | 4.4 | 1st TC1000 | 16d | 2025-11-11 | 2025-11-26 | 8 |  | waiting |
| 10 | 5 | 3-FM+2M RDL wafer | 32d | 2025-10-10 | 2025-11-10 |  |  |  |
| 11 | 6 | FOPLP 8X8 design | 12d | 2025-10-13 | 2025-10-24 |  | 100% | done |
| 12 | 7 | FOPLP 8X8 Eng Sample | 35d | 2025-11-11 | 2025-12-15 | 10 |  | waiting |
| 13 | 8 | Pre-qual | 8d | 2025-12-20 | 2025-12-27 |  |  |  |
| 14 | 9 | 1st TC200 | 8d | 2025-12-20 | 2025-12-27 |  |  |  |
| 15 | 10 | 1st TC500 | 32d | 2025-12-20 | 2026-01-20 |  |  |  |
| 16 | 11 | Formal qual | 1d | 2026-01-25 | 2026-01-25 |  |  |  |
| 17 | 12 | 1st TC200 | 1d | 2025-06-13 | 2025-06-13 |  |  |  |
| 18 | 13 | 1st TC500 | 1d | 2025-06-13 | 2025-06-13 |  |  |  |

Notes:
- 11: FOPLP8X8 方案 (背面漏铜和漏Si) 待台达确认
